Schedule from GanttProject, 2013-01-25 to 2013-04-25.

## Calendars

- Project calendar: Mon-Sun working.

## Resources

| Resource |
| --- |
| Diane Fournier |
| Imane Mouhtij |
| Daniel Thibodeau |
| Émile Arsenault |
| Francis Valois |
| Pierre-Luc Buhler |
| Olivier Sylvain |
| Philippe Bourdages |

## Schedule

| ID | WBS | Task | Duration | Start | Finish | Predecessors | Complete | Resources |
| --- | --- | --- | --- | --- | --- | --- | --- | --- |
| 1 | 1 | **Vision numérique** | 39d | 2013-01-29 | 2013-03-08 |  | 24% |  |
| 2 | 1.1 | **Prototypage** | 13d | 2013-01-29 | 2013-02-10 |  | 40% |  |
| 3 | 1.1.1 | **Kinect** | 11d | 2013-01-29 | 2013-02-08 |  |  |  |
| 4 | 1.1.1.1 | Recherche sur la Kinect / Librairies | 8d | 2013-01-29 | 2013-02-05 |  | 100% | Imane Mouhtij [14%] |
| 5 | 1.1.1.2 | Tester la Kinect | 4d | 2013-02-05 | 2013-02-08 |  | 100% | Imane Mouhtij [15%] |
| 6 | 1.1.2 | OpenCV | 8d | 2013-01-29 | 2013-02-05 |  | 100% | Imane Mouhtij [30%] |
| 7 | 1.1.3 | ROS + support | 13d | 2013-01-29 | 2013-02-10 |  |  | Philippe Bourdages [75%] |
| 8 | 1.2 | **Détecter les obstacles** | 25d | 2013-02-12 | 2013-03-08 |  |  |  |
| 9 | 1.2.1 | Développer l'algorithme de localisation des obstacles | 16d | 2013-02-12 | 2013-02-27 |  |  | Imane Mouhtij [50%] |
| 10 | 1.2.2 | Tester l'algortihme de détection des obstacles | 9d | 2013-02-28 | 2013-03-08 | 9 |  | Imane Mouhtij [50%] |
| 11 | 1.3 | **Lire le cube** | 23d | 2013-02-13 | 2013-03-07 |  |  |  |
| 12 | 1.3.1 | Développer l'algorithme de lecture du cube | 10d | 2013-02-13 | 2013-02-22 |  |  | Olivier Sylvain [25%] |
| 13 | 1.3.2 | Tester l'algorithme de lecture du cube | 13d | 2013-02-23 | 2013-03-07 | 12 |  |  |
| 14 | 1.4 | **Localiser le robot** | 24d | 2013-02-12 | 2013-03-07 |  | 66% |  |
| 15 | 1.4.1 | Développer l'algorithme de localisation du robot | 15d | 2013-02-12 | 2013-02-26 |  |  | Philippe Bourdages [25%] |
| 16 | 1.4.2 | Tester l'algorithme de localisation du robot | 9d | 2013-02-27 | 2013-03-07 | 15 |  | Philippe Bourdages [50%] |
| 17 | 2 | **Communication** | 37d | 2013-01-29 | 2013-03-06 |  | 43% |  |
| 18 | 2.1 | Choix du microcontrôleur | 7d | 2013-01-29 | 2013-02-04 |  | 100% | Diane Fournier [14%] |
| 19 | 2.2 | **Prototypage** | 8d | 2013-01-29 | 2013-02-05 |  | 100% |  |
| 20 | 2.2.1 | Microcontrôleur | 8d | 2013-01-29 | 2013-02-05 |  | 100% | Diane Fournier [14%] |
| 21 | 2.2.2 | Mac mini - connection WiFi | 8d | 2013-01-29 | 2013-02-05 |  | 100% | Imane Mouhtij [14%] |
| 22 | 2.3 | **Recevoir le signal de l'antenne** | 30d | 2013-01-29 | 2013-02-27 |  | 77% |  |
| 23 | 2.3.1 | Concevoir un circuit de réception du signal | 7d | 2013-01-29 | 2013-02-04 |  | 100% | Émile Arsenault [14%]; Francis Valois [14%] |
| 24 | 2.3.2 | Implémenter le circuit de réception | 15d | 2013-02-05 | 2013-02-19 | 23 |  | Émile Arsenault [14%] |
| 25 | 2.3.3 | Tester la communication avec le microcontrôleur | 8d | 2013-02-20 | 2013-02-27 | 24 |  | Diane Fournier [25%]; Pierre-Luc Buhler [25%] |

| ID | WBS | Task | Duration | Start | Finish | Predecessors | Complete | Resources |
| --- | --- | --- | --- | --- | --- | --- | --- | --- |
| 26 | 2.4 | **Communiquer entre le robot et la station de base** | 21d | 2013-02-11 | 2013-03-03 |  |  |  |
| 27 | 2.4.1 | Tester la communication WiFi | 21d | 2013-02-11 | 2013-03-03 |  |  | Imane Mouhtij [14%] |
| 28 | 2.5 | **Communiquer entre le Mac mini et le microcontôleur** | 26d | 2013-01-29 | 2013-02-23 |  | 26% |  |
| 29 | 2.5.1 | **Prototypage** | 5d | 2013-01-29 | 2013-02-02 |  |  |  |
| 30 | 2.5.1.1 | Tester le port UART sur le microcontrôleur | 5d | 2013-01-29 | 2013-02-02 |  | 100% | Diane Fournier [14%] |
| 31 | 2.5.2 | Coder un terminal série avec bits de parité sur le Mac mini | 12d | 2013-02-11 | 2013-02-22 |  |  | Diane Fournier [5%]; Pierre-Luc Buhler [5%] |
| 32 | 2.5.3 | Tester la communication entre Mac mini et microcontrôleur | 1d | 2013-02-23 | 2013-02-23 | 30, 31 |  | Diane Fournier [5%]; Pierre-Luc Buhler [5%] |
| 33 | 2.6 | **Commander les moteurs** | 24d | 2013-02-11 | 2013-03-06 |  |  |  |
| 34 | 2.6.1 | Tester le pwm sur le microcontrôler | 5d | 2013-02-11 | 2013-02-15 |  |  | Diane Fournier [25%]; Pierre-Luc Buhler [25%] |
| 35 | 2.6.2 | Tester l'encodeur à quadrature sur le microcontrôleur | 5d | 2013-02-11 | 2013-02-15 |  |  | Diane Fournier [25%]; Pierre-Luc Buhler [25%] |
| 36 | 2.6.3 | Tester des solutions pour les 2 QEI manquants | 5d | 2013-02-11 | 2013-02-15 |  |  | Diane Fournier [5%]; Pierre-Luc Buhler [5%] |
| 37 | 2.6.4 | Faire l'identification des moteurs | 1d | 2013-02-16 | 2013-02-16 | 34, 35 |  | Daniel Thibodeau [25%]; Francis Valois [25%] |
| 38 | 2.6.5 | Concevoir l'asservissement des moteurs | 10d | 2013-02-17 | 2013-02-26 | 37 |  | Daniel Thibodeau [25%]; Émile Arsenault [25%]; Francis Valois [25%] |
| 39 | 2.6.6 | Tester l'asservissement | 8d | 2013-02-27 | 2013-03-06 | 38 |  | Daniel Thibodeau [25%]; Émile Arsenault [25%]; Francis Valois [25%] |
| 40 | 2.7 | **Transmettre les images de la caméra vers le Mac mini** | 1d | 2013-02-11 | 2013-02-11 |  |  |  |
| 41 | 2.7.1 | **Prototypage** | 1d | 2013-02-11 | 2013-02-11 |  |  |  |
| 42 | 2.7.1.1 | Tester la caméra | 1d | 2013-02-11 | 2013-02-11 |  |  | Imane Mouhtij [5%] |
| 43 | 2.8 | Contrôler la position de la caméra | 1d | 2013-02-11 | 2013-02-11 |  |  |  |
| 44 | 2.9 | **Contrôler le préhenseur du crayon** | 8d | 2013-02-05 | 2013-02-12 |  | 57% |  |
| 45 | 2.9.1 | Concevoir le préhenseur | 4d | 2013-02-05 | 2013-02-08 |  | 100% | Daniel Thibodeau [14%] |
| 46 | 2.9.2 | Implémenter le préhenseur | 1d | 2013-02-09 | 2013-02-09 | 45 |  |  |
| 47 | 2.9.3 | Concevoir un circuit de contrôle du préhenseur | 1d | 2013-02-11 | 2013-02-11 |  |  |  |
| 48 | 2.9.4 | Tester le préhenseur | 1d | 2013-02-12 | 2013-02-12 | 47 |  |  |
| 49 | 3 | **Déplacement** | 25d | 2013-01-29 | 2013-02-22 |  | 92% |  |
| 50 | 3.1 | **Se déplacer sans toucher les obstacles** | 13d | 2013-01-29 | 2013-02-10 |  | 100% |  |
| 51 | 3.1.1 | Tester les moteurs | 4d | 2013-01-29 | 2013-02-01 |  | 100% | Daniel Thibodeau [28%]; Francis Valois [10%] |
| 52 | 3.1.2 | Représentation spaciale de la table dans le logiciel | 13d | 2013-01-29 | 2013-02-10 |  | 100% | Olivier Sylvain [25%] |
| 53 | 3.1.3 | Préparation de l'algorithme de pathfinding | 13d | 2013-01-29 | 2013-02-10 |  | 100% | Olivier Sylvain [50%] |
| 54 | 3.2 | Montage mécanique | 12d | 2013-02-11 | 2013-02-22 |  |  | Francis Valois [25%] |

| ID | WBS | Task | Duration | Start | Finish | Predecessors | Complete | Resources |
| --- | --- | --- | --- | --- | --- | --- | --- | --- |
| 55 | 4 | **Traitement numérique** | 36d | 2013-02-01 | 2013-03-08 |  | 20% |  |
| 56 | 4.1 | Contrôler le robot pour le dessin | 1d | 2013-03-07 | 2013-03-07 | 39 |  |  |
| 57 | 4.2 | **Décoder le signal d'antenne** | 1d | 2013-02-01 | 2013-02-01 |  | 100% |  |
| 58 | 4.2.1 | Concevoir le circuit de décodage | 1d | 2013-02-01 | 2013-02-01 |  | 100% |  |
| 59 | 4.2.2 | Implémenter le circuit de décodage | 1d | 2013-02-01 | 2013-02-01 |  | 100% |  |
| 60 | 4.3 | Choisir le cube selon le signal d'antenne | 1d | 2013-02-28 | 2013-02-28 | 25, 28 |  |  |
| 61 | 4.4 | **Résoudre le sudocube** | 1d | 2013-03-08 | 2013-03-08 | 11 |  |  |
| 62 | 4.4.1 | Coder l'algorithme de résolution | 1d | 2013-03-08 | 2013-03-08 |  |  | Olivier Sylvain [25%] |
| 63 | 5 | **Alimentation** | 20d | 2013-02-01 | 2013-02-20 |  | 55% |  |
| 64 | 5.1 | **Utiliser une pile rechargeable** | 19d | 2013-02-01 | 2013-02-19 |  | 52% |  |
| 65 | 5.1.1 | Sélectionner et acheter une pile | 2d | 2013-02-01 | 2013-02-02 |  | 100% | Émile Arsenault [17%] |
| 66 | 5.1.2 | Concevoir un circuit d'alimentation électrique | 7d | 2013-02-05 | 2013-02-11 |  | 100% | Daniel Thibodeau [14%]; Émile Arsenault [14%]; Francis Valois [14%] |
| 67 | 5.1.3 | Implémenter le circuit d'alimentation | 8d | 2013-02-12 | 2013-02-19 | 66 |  | Daniel Thibodeau [2%] |
| 68 | 5.1.4 | Concevoir un support pour la batterie | 8d | 2013-02-04 | 2013-02-11 |  | 50% | Daniel Thibodeau [18%] |
| 69 | 5.2 | Alimenter les moteurs | 1d | 2013-02-20 | 2013-02-20 | 67 |  |  |
| 70 | 5.3 | Alimenter l'ordinateur (boost 24V) | 4d | 2013-02-04 | 2013-02-07 |  | 100% | Émile Arsenault [4%] |
| 71 | 5.4 | Alimenter les différents périphériques | 1d | 2013-02-20 | 2013-02-20 | 67 |  |  |
| 72 | 6 | **Affichage** | 40d | 2013-01-29 | 2013-03-09 |  | 48% |  |
| 73 | 6.1 | Afficher le cube résolu | 1d | 2013-03-09 | 2013-03-09 | 61 |  |  |
| 74 | 6.2 | **Allumer la DEL lorsque tâche complétée** | 1d | 2013-02-11 | 2013-02-11 |  |  |  |
| 75 | 6.2.1 | Faire un circuit pour la DEL | 1d | 2013-02-11 | 2013-02-11 |  |  |  |
| 76 | 6.3 | Afficher la trajectoire optimale calculée | 1d | 2013-02-11 | 2013-02-11 | 53 |  |  |
| 77 | 6.4 | Afficher la position réelle | 1d | 2013-03-08 | 2013-03-08 | 14 |  |  |
| 78 | 6.5 | Afficher le message de fin | 1d | 2013-02-11 | 2013-02-11 |  |  |  |

| ID | WBS | Task | Duration | Start | Finish | Predecessors | Complete | Resources |
| --- | --- | --- | --- | --- | --- | --- | --- | --- |
| 79 | 6.6 | **Afficher sur le LCD** | 5d | 2013-01-29 | 2013-02-02 |  | 83% |  |
| 80 | 6.6.1 | **Prototypage** | 5d | 2013-01-29 | 2013-02-02 |  |  |  |
| 81 | 6.6.1.1 | Tester le LCD | 5d | 2013-01-29 | 2013-02-02 |  | 100% | Diane Fournier [5%] |
| 82 | 7 | **Documentation** | 32d | 2013-01-26 | 2013-02-26 |  | 72% |  |
| 83 | 7.1 | **DPF** | 6d | 2013-01-31 | 2013-02-05 |  | 100% |  |
| 84 | 7.1.1 | DPF itération 1 | 5d | 2013-01-31 | 2013-02-04 |  | 100% | Pierre-Luc Buhler [25%] |
| 85 | 7.1.2 | DPF itération 2 | 1d | 2013-02-05 | 2013-02-05 | 84 | 100% | Diane Fournier [25%]; Imane Mouhtij [10%]; Daniel Thibodeau [25%]; Émile Arsenault [10%]; Francis Valois [10%]; Pierre-Luc Buhler [10%]; Olivier Sylvain [10%]; Philippe Bourdages [10%] |
| 86 | 7.2 | **Diagramme de classes** | 12d | 2013-01-29 | 2013-02-09 |  | 100% |  |
| 87 | 7.2.1 | Diagramme de classes itération 1 | 7d | 2013-01-29 | 2013-02-04 |  | 100% | Imane Mouhtij [14%] |
| 88 | 7.2.2 | Diagramme de classe itération 2 | 5d | 2013-02-05 | 2013-02-09 | 87 | 100% | Olivier Sylvain [9%] |
| 89 | 7.3 | **Diagramme de contexte** | 12d | 2013-01-28 | 2013-02-08 |  | 100% |  |
| 90 | 7.3.1 | Diagramme de contexte itération 1 | 8d | 2013-01-28 | 2013-02-04 |  | 100% | Émile Arsenault [14%] |
| 91 | 7.3.2 | Diagramme de contexte itération 2 | 4d | 2013-02-05 | 2013-02-08 | 90 | 100% | Pierre-Luc Buhler [15%] |
| 92 | 7.4 | **Diagramme des cas d'utilisation** | 15d | 2013-01-26 | 2013-02-09 |  | 100% |  |
| 93 | 7.4.1 | Use Case itération 1 | 11d | 2013-01-26 | 2013-02-05 |  | 100% | Diane Fournier [15%] |
| 94 | 7.4.2 | Use Case itération 2 | 4d | 2013-02-06 | 2013-02-09 | 93 | 100% | Pierre-Luc Buhler [15%] |
| 95 | 7.5 | Diagramme de séquences | 1d | 2013-02-05 | 2013-02-05 |  | 100% | Philippe Bourdages [9%] |
| 96 | 7.6 | **Diagramme des fonctionalités** | 15d | 2013-02-12 | 2013-02-26 |  |  |  |
| 97 | 7.6.1 | Diagramme des fonctionalités itération 1 | 8d | 2013-02-12 | 2013-02-19 |  |  | Daniel Thibodeau [10%] |
| 98 | 7.6.2 | Diagramme des fonctionalités itération 2 | 7d | 2013-02-20 | 2013-02-26 | 97 |  | Daniel Thibodeau [10%] |
| 99 | 7.7 | **Description des prototypes** | 4d | 2013-02-05 | 2013-02-08 |  | 100% |  |
| 100 | 7.7.1 | Prototype - alimentation | 4d | 2013-02-05 | 2013-02-08 |  | 100% | Daniel Thibodeau [10%] |
| 101 | 7.7.2 | Prototype - microcontrôleur | 4d | 2013-02-05 | 2013-02-08 |  | 100% | Diane Fournier [15%] |
| 102 | 7.7.3 | Prototype - antenne | 4d | 2013-02-05 | 2013-02-08 |  | 100% | Émile Arsenault [15%] |
| 103 | 7.7.4 | Prototype - préhenseur | 4d | 2013-02-05 | 2013-02-08 |  | 100% | Émile Arsenault [15%] |

| ID | WBS | Task | Type | Duration | Start | Finish | Predecessors | Complete | Resources |
| --- | --- | --- | --- | --- | --- | --- | --- | --- | --- |
| 104 | 7.8 | **Diagramme physique** |  | 9d | 2013-02-11 | 2013-02-19 |  |  |  |
| 105 | 7.8.1 | Diagramme physique itération 1 |  | 9d | 2013-02-11 | 2013-02-19 |  |  |  |
| 106 | 7.9 | **Registre de risques** |  | 9d | 2013-02-11 | 2013-02-19 |  |  |  |
| 107 | 7.9.1 | Registre de risques itération 1 |  | 9d | 2013-02-11 | 2013-02-19 |  |  |  |
| 108 | 7.10 | **Plan de tests** |  | 9d | 2013-02-11 | 2013-02-19 |  |  |  |
| 109 | 7.10.1 | Plan de tests itération 1 |  | 9d | 2013-02-11 | 2013-02-19 |  |  |  |
| 110 | 7.11 | Plan d'intégration |  | 1d | 2013-02-11 | 2013-02-11 |  |  |  |
| 111 | 7.12 | **Rapport1** |  | 13d | 2013-01-29 | 2013-02-10 |  | 100% |  |
| 112 | 7.12.1 | Ecrire les textes pour le livrable 1 |  | 11d | 2013-01-29 | 2013-02-08 |  | 100% | Diane Fournier [10%]; Imane Mouhtij [9%]; Daniel Thibodeau [10%]; Francis Valois [10%]; Pierre-Luc Buhler [10%]; Olivier Sylvain [5%]; Philippe Bourdages [5%] |
| 113 | 7.12.2 | Réviser les diagrammes |  | 1d | 2013-02-07 | 2013-02-07 |  | 100% | Pierre-Luc Buhler [10%] |
| 114 | 7.12.3 | Assemblage du rapport 1 |  | 2d | 2013-02-09 | 2013-02-10 | 112, 113 | 100% | Francis Valois [70%] |
| 115 | 7.12.4 | Réviser le rapport 1 |  | 2d | 2013-02-09 | 2013-02-10 | 112 | 100% | Diane Fournier [10%]; Daniel Thibodeau [25%]; Francis Valois [16%] |
| 116 | 7.13 | **Présentations orales** |  | 1d | 2013-02-11 | 2013-02-11 |  |  |  |
| 117 | 7.13.1 | **Présentation livrable 2** |  | 1d | 2013-02-11 | 2013-02-11 |  |  |  |
| 118 | 7.13.1.1 | Gabarit powerpoint pour présentations |  | 1d | 2013-02-11 | 2013-02-11 |  |  | Francis Valois [1%] |
| 119 | 8 | **Gestion** |  | 15d | 2013-01-29 | 2013-02-12 |  | 16% |  |
| 120 | 8.1 | **diagramme de Gantt** |  | 5d | 2013-02-04 | 2013-02-08 |  | 100% |  |
| 121 | 8.1.1 | Gantt itération 1 |  | 2d | 2013-02-04 | 2013-02-05 |  | 100% | Diane Fournier [20%] |
| 122 | 8.1.2 | Gantt itération 2 |  | 3d | 2013-02-06 | 2013-02-08 | 121 | 100% | Diane Fournier [74%] |
| 123 | 8.2 | **tableaux des tâches hebdomadaires** |  | 15d | 2013-01-29 | 2013-02-12 |  |  |  |
| 124 | 8.2.1 | semaine 1 | milestone | 0d | 2013-01-29 | 2013-01-29 |  |  |  |
| 125 | 8.2.2 | semaine 2 | milestone | 0d | 2013-02-05 | 2013-02-05 |  |  |  |
| 126 | 8.2.3 | semaine 3 | milestone | 0d | 2013-02-12 | 2013-02-12 |  |  |  |
| 127 | 9 | **Réunions** |  | 8d | 2013-01-25 | 2013-02-01 |  |  |  |
| 128 | 9.1 | Réunion 1 | milestone | 0d | 2013-01-25 | 2013-01-25 |  |  |  |
| 129 | 9.2 | Réunion 2 | milestone | 0d | 2013-01-29 | 2013-01-29 |  |  |  |
| 130 | 9.3 | Réunion 3 | milestone | 0d | 2013-02-05 | 2013-02-05 |  |  |  |

| ID | WBS | Task | Type | Duration | Start | Finish | Predecessors |
| --- | --- | --- | --- | --- | --- | --- | --- |
| 131 | 10 | **Livrables** |  | 50d | 2013-02-11 | 2013-04-01 |  |
| 132 | 10.1 | Livrable 1 | milestone | 0d | 2013-02-11 | 2013-02-11 |  |
| 133 | 10.2 | Livrable 2 | milestone | 0d | 2013-03-08 | 2013-03-08 |  |
| 134 | 10.3 | Livrable 3 | milestone | 0d | 2013-04-05 | 2013-04-05 |  |
| 135 | 10.4 | Livrable 4 | milestone | 0d | 2013-04-19 | 2013-04-19 |  |
| 136 | 11 | Intégration |  | 32d | 2013-02-12 | 2013-03-15 | 110 |
| 137 | 12 | Concours | milestone | 0d | 2013-04-18 | 2013-04-18 |  |
| 138 | 13 | Reprise | milestone | 0d | 2013-04-25 | 2013-04-25 |  |
